# Supley

Schedule from MS Project XML, 2025-03-18 to 2025-08-28, status date 2024-11-25, 4 hours a day.
418

## Calendars

- Padrão: Mon-Fri 09:00-12:00, 13:00-18:00; Sat-Sun off.

## Resources

| Resource | Group |
| --- | --- |
| Gabriel Menezes | M365 |
| Felipe Neiva | Data&Power |
| Erick Alex | Azure |
| Mateus Augusto | Azure |
| Luciano Seabra | M365 |
| Helen Machado | Data&Power |
| René Braga | Azure |
| Tadeu Trajano | M365 |
| Vitória Germann | Data&Power |
| Eduardo Kochhann | PMO |
| TAM 1 |  |
| AM 1 |  |
| Carla Teixeira | PSales |
| Matheus Pacheco | PSales |
| Eduardo Fernandes | SQUAD PMO |
| Cliente 1 | Cliente |
| Caio |  |
| TEEVO |  |
| Comercial |  |
| CS |  |
| PRIME HOLDING |  |
| SUPORTE |  |

## Schedule

| ID | WBS | Task | Type | Duration | Start | Finish | Predecessors | Baseline start | Baseline finish | Baseline duration | Total slack | Free slack | Constraint | Resources | Work |
| --- | --- | --- | --- | --- | --- | --- | --- | --- | --- | --- | --- | --- | --- | --- | --- |
| 1 | 1 | **Fase Planejamento** |  | 4d | 2025-03-18 | 2025-03-19 |  | 2024-11-26 | 2024-11-29 | 6.25d | 48d |  | start no earlier than 2024-11-27 |  | 11h |
| 2 | 1.1 | **Meet - SQUAD PMO** |  | 0.75d | 2025-03-18 | 2025-03-18 |  | 2024-11-26 | 2024-11-26 | 0.4d | 48d |  | start no earlier than 2024-11-27 |  | 3h |
| 3 | 1.1.1 | Analise de escopo |  | 1h | 2025-03-18 | 2025-03-18 |  | 2024-11-26 | 2024-11-26 | 0.3h | 48d | 0d | start no earlier than 2025-03-18 | Eduardo Kochhann; Vitória Germann | 2h |
| 4 | 1.1.2 | Mapeamento de riscos e pontos de atenção |  | 1h | 2025-03-18 | 2025-03-18 | 6 | 2024-11-26 | 2024-11-26 | 1h | 48d | 0d |  | Eduardo Kochhann [50%]; Vitória Germann [50%] | 1h |
| 5 | 1.2 | **Planejamento** |  | 3d | 2025-03-18 | 2025-03-19 |  |  |  |  | 48d | 0d |  |  | 6h |
| 6 | 1.2.1 | Definição de metodologia e artefatos |  | 0.25d | 2025-03-18 | 2025-03-18 | 3 | 2024-11-26 | 2024-11-26 | 0.07d | 48d | 0d |  | Eduardo Kochhann | 1h |
| 7 | 1.2.2 | Montagem de cronograma |  | 1d | 2025-03-18 | 2025-03-18 | 4 | 2024-11-26 | 2024-11-26 | 0.5d | 48d | 0d |  | Eduardo Kochhann [50%] | 2h |
| 8 | 1.2.3 | Mapa de comunicação |  | 0.5d | 2025-03-18 | 2025-03-19 | 7 | 2024-11-26 | 2024-11-26 | 0.07d | 48d | 0d |  | Eduardo Kochhann [50%] | 1h |
| 9 | 1.2.4 | Montagem de material |  | 1d | 2025-03-19 | 2025-03-19 | 8 |  |  |  | 48d |  |  | Eduardo Kochhann [50%] | 2h |
| 10 | 1.3 | KickOff |  | 0.5d | 2025-03-19 | 2025-03-19 | 5 | 2024-11-29 | 2024-11-29 | 0.25d | 48d | 0d |  | Eduardo Kochhann [50%] | 1h |
| 11 | 1.4 | Milistone - Start do projeto | milestone | 0h | 2025-03-19 | 2025-03-19 | 10 | 2024-11-29 | 2024-11-29 |  | 48d | 0d |  |  |  |
| 12 | 1.5 | Enviar documentos ao cliente |  | 1h | 2025-03-19 | 2025-03-19 | 11 |  |  |  | 48d |  |  | Eduardo Kochhann | 1h |
| 13 | 2 | **FS 1** |  | 28d? | 2025-04-23 | 2025-05-12 |  | 2024-12-03 | 2024-12-20 | 26.88d? | 0d |  | start no earlier than 2024-11-22 |  | 80h |
| 14 | 2.1 | **Validações de requisitos** |  | 1d? | 2025-04-23 | 2025-04-23 |  | 2024-12-03 | 2024-12-04 | 2.5d? | 0d |  |  |  |  |
| 15 | 2.1.1 | Acessos ao ambiente |  | 1d? | 2025-04-23 | 2025-04-23 | 1 |  |  |  | 0d |  | start no earlier than 2025-04-23 |  |  |
| 16 | 2.2 | **Setup - Azure** |  | 27d | 2025-04-23 | 2025-05-12 |  |  |  |  | 0d |  | start no earlier than 2024-11-25 |  | 80h |
| 17 | 2.2.1 | Criação do ambiente Azure |  | 11d | 2025-04-23 | 2025-04-30 | 14 |  |  |  | 0d |  | finish no earlier than 2025-04-30 | Erick Alex [68.18%] | 30h |
| 18 | 2.2.2 | Configuração do ambiente Azure |  | 7d | 2025-05-01 | 2025-05-06 | 17 |  |  |  | 0d |  | start no earlier than 2025-05-01 |  | 20h |
| 19 | 2.2.3 | Validação de conectividade - Recursos Azure e DataSense OnPremise |  | 3d | 2025-05-06 | 2025-05-07 | 18 |  |  |  | 0d |  |  |  | 10h |
| 20 | 2.2.4 | Validação testes e correções de Deploy |  | 3d | 2025-05-08 | 2025-05-09 | 19 |  |  |  | 0d |  | start no earlier than 2025-04-14 | Erick Alex [83.33%] | 10h |
| 21 | 2.2.5 | Documentação de entrega da Infraestrutura |  | 3d | 2025-05-09 | 2025-05-12 | 20 |  |  |  | 0d |  | finish no earlier than 2025-04-21 | Erick Alex [83.33%] | 10h |
| 22 | 3 | **FS 2** |  | 141d? | 2025-05-13 | 2025-08-19 |  |  |  |  | 0d |  |  |  | 305h |
| 23 | 3.1 | CBD - Inicial |  | 15d | 2025-05-13 | 2025-05-22 | 21 |  |  |  | 0d |  |  |  | 70h |
| 24 | 3.2 | Retorno de informações - cliente |  | 7d | 2025-05-23 | 2025-05-28 | 21, 26 |  |  |  | 0d |  | start no earlier than 2024-11-22 | Vitória Germann [53.57%] | 15h |

Notes:
- 19: Ação do Cliente

| ID | WBS | Task | Type | Duration | Start | Finish | Predecessors | Baseline start | Baseline finish | Baseline duration | Total slack | Constraint | Resources | Work |
| --- | --- | --- | --- | --- | --- | --- | --- | --- | --- | --- | --- | --- | --- | --- |
| 25 | 3.3 | **Setup - Data** |  | 40d? | 2025-05-22 | 2025-06-19 |  |  |  |  | 0d | start no earlier than 2024-11-22 |  | 50h |
| 26 | 3.3.1 | Levantamento de requisitos |  | 1d? | 2025-05-22 | 2025-05-22 | 23 |  |  |  | 0d |  |  |  |
| 27 | 3.3.2 | Analise de requisitos |  | 1d? | 2025-05-28 | 2025-05-28 | 24 |  |  |  | 0d |  |  |  |
| 28 | 3.3.3 | Configuração de conectores com fontes de dados |  | 6d | 2025-05-29 | 2025-06-02 | 24FS+1d, 27 |  |  |  | 0d | start no earlier than 2024-11-22 | Vitória Germann [41.67%] | 10h |
| 29 | 3.3.4 | Construção de diagrama ER para comportar a estrutura do DW |  | 12d | 2025-06-03 | 2025-06-10 | 28 |  |  |  | 0d | start no earlier than 2024-11-22 | Vitória Germann [41.67%] | 20h |
| 30 | 3.3.5 | Validade do Diagrama - Cliente |  | 1d? | 2025-06-11 | 2025-06-11 | 29 |  |  |  | 0d |  |  |  |
| 31 | 3.3.6 | Criação das tabelas no banco de dados DW |  | 12d | 2025-06-11 | 2025-06-19 | 29, 30 |  |  |  | 0d | start no earlier than 2024-11-22 | Vitória Germann [41.67%] | 20h |
| 32 | 3.4 | **Desenvolvimento** |  | 72d | 2025-06-19 | 2025-08-08 |  |  |  |  | 0d | start no earlier than 2024-11-22 |  | 140h |
| 33 | 3.4.1 | Desenvolvimento de pipelines para extração, processamento e carga de dados (ETL) – 20 tabelas com aproximadamente 50 colunas |  | 60d | 2025-06-19 | 2025-07-31 | 31 |  |  |  | 0d | start no earlier than 2024-11-22 | Vitória Germann [50%] | 120h |
| 34 | 3.4.2 | Testes de integração dos pipelines e validação dos dados |  | 12d | 2025-07-31 | 2025-08-08 | 33 |  |  |  | 0d | start no earlier than 2024-11-22 | Vitória Germann [41.67%] | 20h |
| 35 | 3.5 | **Deploy** |  | 14d | 2025-08-08 | 2025-08-19 |  |  |  |  | 0d | start no earlier than 2024-11-22 |  | 30h |
| 36 | 3.5.1 | Execução de pipelines para importação de dados históricos |  | 7d | 2025-08-08 | 2025-08-13 | 34 |  |  |  | 0d | start no earlier than 2024-11-22 | Vitória Germann [53.57%] | 15h |
| 37 | 3.5.2 | Definição da periodicidade de carga por pipeline orquestrador e criação de agendamento |  | 7d | 2025-08-14 | 2025-08-19 | 36 |  |  |  | 0d | start no earlier than 2024-11-22 | Vitória Germann [53.57%] | 15h |
| 38 | 3.5.3 | Milestone - CutOver | milestone | 0h | 2025-08-19 | 2025-08-19 | 37 | 2024-12-19 | 2024-12-19 |  | 0d |  |  |  |
| 39 | 4 | **Fase CutOver** |  | 4d | 2025-08-19 | 2025-08-21 |  | 2024-12-20 | 2024-12-20 | 0.25d | 0d | start no earlier than 2024-11-28 |  | 6h |
| 40 | 4.1 | Definição e liberação de acessos aos usuários |  | 4d | 2025-08-19 | 2025-08-21 | 38 |  |  |  | 0d | start no earlier than 2025-07-17 | Vitória Germann [37.5%] | 6h |
| 41 | 5 | **Fase Encerramento** |  | 11d | 2025-08-21 | 2025-08-28 |  | 2024-12-06 | 2024-12-24 | 23.52d | 0d | start no earlier than 2024-11-28 |  | 16h |
| 42 | 5.1 | Documentação de entrega |  | 7d | 2025-08-21 | 2025-08-26 | 40 | 2024-12-06 | 2024-12-06 | 0.5d | 0d |  | Vitória Germann [50%] | 14h |
| 43 | 5.2 | Entrega do Projeto |  | 1d | 2025-08-27 | 2025-08-27 | 42FS+1d | 2024-12-20 | 2024-12-20 | 0.5d | 0d |  | Eduardo Kochhann [25%] | 1h |
| 44 | 5.3 | Milestone - GoLive | milestone | 0h | 2025-08-28 | 2025-08-28 | 43FS+1d | 2024-12-23 | 2024-12-23 | 1h | 0d |  |  |  |
| 45 | 5.4 | Handover Suporte (INTERNO) |  | 1d | 2025-08-28 | 2025-08-28 | 44 | 2024-12-23 | 2024-12-23 | 0.07d | 0d |  | Vitória Germann [25%] | 1h |
